How a schedule from MS Project changed from version to version. A marks actual dates.

## Version 1 (saved 2020-12-17)

Note of the change: project

| ID | WBS | Task | Duration | Start | Finish | Predecessors | Complete | Total float | Constraint |
| --- | --- | --- | --- | --- | --- | --- | --- | --- | --- |
| 1 |  | Identificación de requisitos | 7d | 2020-11-04 A | 2020-11-12 A |  | 100% |  |  |
| 2 | 2 | **WP4 Arte** | 40d | 2020-11-13 A | 2021-01-07 | 1 | 48% | 4d |  |
| 3 |  | Diseño de interfaz | 7d | 2020-11-13 A | 2020-11-23 A | 1 | 100% |  |  |
| 4 |  | Entrega del diseño de interfaz | 0d | 2020-11-23 | 2020-11-23 | 3 |  | 1.75d |  |
| 5 |  | Búsqueda/creación de fondos | 12d | 2020-11-24 A | 2020-12-09 A | 4 | 100% |  | finish no earlier than 2020-12-09 |
| 6 |  | Concept y arte final de los personajes | 21d | 2020-12-10 | 2021-01-07 | 5 |  | 2d |  |
| 7 |  | Entrega de personajes y fondos | 0d | 2021-01-07 | 2021-01-07 | 6 |  | 2d |  |
| 8 | 3 | **WP1 Programación** | 43d | 2020-11-13 A | 2021-01-13 | 1 | 76% | 1d |  |
| 9 |  | Programar sistema de diálogos | 23d | 2020-11-13 A | 2020-12-15 A | 1 | 100% |  | finish no earlier than 2020-12-15 |
| 10 |  | Comienzo fase testeo de los diálogos | 0d | 2020-12-15 | 2020-12-15 | 9 |  | 18d |  |
| 11 |  | Programar sistema de guardado de partidas | 5d | 2020-12-16 A | 2020-12-22 A | 9 | 100% |  |  |
| 12 |  | Programar conexión con base de datos en red | 5d | 2020-12-23 | 2020-12-29 | 11 |  | 11d |  |
| 13 |  | Introducción de elementos de sonido y arte en el juego | 2d | 2021-01-11 | 2021-01-12 | 24, 7 |  | 1d | finish no earlier than 2021-01-11 |
| 14 |  | Juego finalizado | 0d | 2021-01-13 | 2021-01-13 | 13 |  | 1d | start no earlier than 2021-01-13 |
| 15 |  | Testeo diálogos | 3d | 2020-12-16 A | 2020-12-18 | 10 | 25% | 18d | start no earlier than 2020-12-16 |
| 16 | 4 | **WP2 Guión** | 33d | 2020-11-13 A | 2020-12-29 | 1 | 65% | 8d |  |
| 17 |  | Tratamiento de guion | 5d | 2020-11-13 A | 2020-11-19 A | 1 | 100% |  |  |
| 18 |  | Escribir guion | 22d | 2020-11-20 A | 2020-12-21 | 17 | 75% | 8d |  |
| 19 |  | Entrega del guión | 0d | 2020-12-21 | 2020-12-21 | 18 |  | 4d |  |
| 20 |  | Traducir guion | 6d | 2020-12-22 | 2020-12-29 | 19 |  | 8d |  |
| 21 |  | Integrar guion del juego | 3d | 2020-12-30 | 2021-01-01 | 9, 20 |  | 8d |  |
| 22 | 6 | **WP3 Sonido** | 36d | 2020-11-20 A | 2021-01-08 | 17 | 50% | 1d |  |
| 23 |  | Efectos de sonido y banda sonora | 32d | 2020-11-20 A | 2021-01-08 | 17 | 50% | 1d | finish no earlier than 2021-01-08 |
| 24 |  | Entrega del sonido | 0d | 2021-01-08 | 2021-01-08 | 23 |  | 1d |  |
| 25 |  | Memoria del proyecto | 44d | 2020-11-13 A | 2021-01-13 | 1 | 50% | 0d | finish no earlier than 2021-01-13 |

## Version 2 (saved 2020-12-18)

Note of the change: cambios en project

Last finish stays 2021-01-13.

Changed:

| ID | Task | Complete |
| --- | --- | --- |
| 8 | **WP1 Programación** | 76% → 78% |
| 15 | Testeo diálogos | 25% → 50% |
